# GANTT_Formation_V0

Schedule from MS Project, 2017-10-24 to 2018-06-07, 7 hours a day, costs in €, A marks actual dates.

## Calendars

- Standard: Mon-Fri 09:00-12:00, 14:00-18:00; Sat-Sun off.

## Resources

| Resource | Rate |
| --- | --- |
| Michel | 21.43 |
| Céline | 21.43 |

## Schedule

| ID | WBS | Task | Duration | Start | Finish | Predecessors | Complete | Remaining | Total slack | Free slack | Resources | Work | Actual work | Cost | Actual cost | Text1 |
| --- | --- | --- | --- | --- | --- | --- | --- | --- | --- | --- | --- | --- | --- | --- | --- | --- |
| 1 | 1 | **Formation Android** | 162.02d? | 2017-10-24 09:00 A | 2018-06-07 09:10 |  | 9% | 148d? | 0d |  |  | 787.55h | 92.4h | 16,876.07 | 1,980 |  |
| 2 | 1.1 | **Etude de cas** | 132.4d? | 2017-10-24 09:00 A | 2018-04-26 11:50 |  | 11% | 117.77d? | 0.55d | 0d |  | 638.45h | 92.4h | 13,681.07 | 1,980 |  |
| 3 | 1.1.1 | Analyse du besoin | 23.33d? | 2017-10-24 09:00 A | 2017-11-24 11:20 |  | 94% | 1.33d? | 0.55d | 0d | Céline [30%]; Michel [30%] | 98h | 92.4h | 2,100 | 1,980 |  |
| 4 | 1.1.2 | **Réalisation** | 103.93d | 2017-11-24 11:20 | 2018-04-19 10:50 | 3 |  |  | 0.55d | 0d |  | 519.15h |  | 11,124.64 |  |  |
| 5 | 1.1.2.1 | **Mise en place de la Base Données** | 1.88d | 2017-11-24 11:20 | 2017-11-28 10:30 |  |  |  | 0.55d | 0d |  | 3.4h |  | 72.86 |  |  |
| 6 | 1.1.2.1.1 | Choix du SGBD | 10min | 2017-11-24 11:20 | 2017-11-24 11:30 |  |  |  | 0.55d | 0d | Céline [30%]; Michel [30%] | 0.1h |  | 2.14 |  |  |
| 7 | 1.1.2.1.2 | Réalisation du schéma de Base de données | 1d | 2017-11-24 11:30 | 2017-11-27 11:30 | 6 |  |  | 0.55d | 0d | Michel [30%] | 2.1h |  | 45 |  |  |
| 8 | 1.1.2.1.3 | Création de la Base de données | 3h | 2017-11-27 11:30 | 2017-11-27 16:30 | 7 |  |  | 0.55d | 0d | Michel [30%] | 0.9h |  | 19.29 |  |  |
| 9 | 1.1.2.1.4 | Configuration des accès à la Base de données | 1h | 2017-11-27 16:30 | 2017-11-27 17:30 | 8 |  |  | 0.55d | 0d | Michel [30%] | 0.3h |  | 6.43 |  |  |
| 10 | 1.1.2.1.5 | Mise en place de la redondance de la Base de données | 2h | 2017-11-27 17:30 | 2017-11-28 10:30 | 9 |  |  | 0.55d |  |  |  |  |  |  | facultatif |
| 11 | 1.1.2.2 | **Mise en place du Back end** | 102.05d | 2017-11-28 10:30 | 2018-04-19 10:50 | 5, 21 |  |  | 0.55d |  | Céline [15%]; Michel [15%] | 321.45h |  | 6,888.21 |  |  |
| 12 | 1.1.2.2.1 | Choix du Langage de programation | 20min | 2017-11-28 10:30 | 2017-11-28 10:50 |  |  |  | 0.55d | 0d | Céline [15%] | 0.05h |  | 1.07 |  |  |
| 13 | 1.1.2.2.2 | Choix de l'architecture | 2d | 2017-11-28 10:50 | 2017-11-30 10:50 | 12 |  |  | 0.55d | 0d | Céline [15%] | 2.1h |  | 45 |  |  |
| 14 | 1.1.2.2.3 | Réalisation des Traitements | 100d | 2017-11-30 10:50 | 2018-04-19 10:50 | 13 |  |  | 0.55d |  | Céline [15%] | 105h |  | 2,250 |  |  |
| 15 | 1.1.2.3 | **Mise en place de l'appilcation mobile** | 52.57d | 2017-11-24 11:20 | 2018-02-06 17:20 |  |  |  | 1.36d |  |  | 194.3h |  | 4,163.57 |  |  |
| 16 | 1.1.2.3.1 | **Réalisation des maquettes de l'application** | 1.07d | 2017-11-24 11:20 | 2017-11-27 11:50 |  |  |  | 1.36d |  |  | 4.4h |  | 94.29 |  |  |
| 17 | 1.1.2.3.1.1 | **Définition de la charte Graphique** | 0.07d | 2017-11-24 11:20 | 2017-11-24 11:50 |  |  |  | 1.36d | 0d |  | 0.2h |  | 4.29 |  |  |
| 18 | 1.1.2.3.1.1.1 | Choix des couleurs | 10min | 2017-11-24 11:20 | 2017-11-24 11:30 |  |  |  | 1.36d | 0d | Céline [30%] | 0.05h |  | 1.07 |  | Coraille + blanc |
| 19 | 1.1.2.3.1.1.2 | Choix de la police de caractère | 10min | 2017-11-24 11:30 | 2017-11-24 11:40 | 18 |  |  | 1.36d | 0d | Michel [30%]; Céline [30%] | 0.1h |  | 2.14 |  |  |
| 20 | 1.1.2.3.1.1.3 | Choix de l'icone de l'application | 10min | 2017-11-24 11:40 | 2017-11-24 11:50 | 19 |  |  | 1.36d |  | Michel [30%] | 0.05h |  | 1.07 |  | Cadie + ticket de caisse |
| 21 | 1.1.2.3.1.2 | **Réalisation des Mockup correspondant à chaque Activity** | 1d | 2017-11-24 11:50 | 2017-11-27 11:50 | 17 |  |  | 1.36d | 0.81d |  | 4.2h |  | 90 |  |  |
| 22 | 1.1.2.3.1.2.1 | Inscription | 1h | 2017-11-24 11:50 | 2017-11-24 14:50 |  |  |  | 1.36d | 0d | Michel [30%] | 0.3h |  | 6.43 |  |  |
| 23 | 1.1.2.3.1.2.2 | Connexion | 0.14d | 2017-11-24 14:50 | 2017-11-24 15:50 | 22 |  |  | 1.36d | 0d | Michel [30%] | 0.3h |  | 6.43 |  |  |
| 24 | 1.1.2.3.1.2.3 | Recherche de lieu | 0.14d | 2017-11-24 15:50 | 2017-11-24 16:50 | 23 |  |  | 1.36d | 0d | Michel [30%] | 0.3h |  | 6.43 |  |  |
| 25 | 1.1.2.3.1.2.4 | Recherche de produit | 0.14d | 2017-11-24 11:50 | 2017-11-24 14:50 |  |  |  | 1.36d | 0d | Céline [30%] | 0.3h |  | 6.43 |  |  |
| 26 | 1.1.2.3.1.2.5 | Recherche par catégorie | 0.14d | 2017-11-24 14:50 | 2017-11-24 15:50 | 25 |  |  | 1.36d | 0d | Céline [30%] | 0.3h |  | 6.43 |  |  |
| 27 | 1.1.2.3.1.2.6 | Saisie d'avis | 0.14d | 2017-11-24 16:50 | 2017-11-24 17:50 | 24 |  |  | 1.36d | 0d | Michel [30%] | 0.3h |  | 6.43 |  |  |
| 28 | 1.1.2.3.1.2.7 | Fiche description produit | 0.14d | 2017-11-24 15:50 | 2017-11-24 16:50 | 26 |  |  | 1.36d | 0d | Céline [30%] | 0.3h |  | 6.43 |  |  |
| 29 | 1.1.2.3.1.2.8 | Fiche description lieu | 0.14d | 2017-11-24 16:50 | 2017-11-24 17:50 | 28 |  |  | 1.36d | 0d | Céline [30%] | 0.3h |  | 6.43 |  |  |
| 30 | 1.1.2.3.1.2.9 | Numériseur de ticket | 0.14d | 2017-11-24 17:50 | 2017-11-27 09:50 | 27 |  |  | 1.36d | 0d | Michel [30%] | 0.3h |  | 6.43 |  |  |
| 31 | 1.1.2.3.1.2.10 | Liste de course | 0.14d | 2017-11-27 09:50 | 2017-11-27 10:50 | 30 |  |  | 1.36d | 0d | Michel [30%] | 0.3h |  | 6.43 |  |  |
| 32 | 1.1.2.3.1.2.11 | Recherche d'utilisateur | 0.14d | 2017-11-24 17:50 | 2017-11-27 09:50 | 29 |  |  | 1.36d | 0d | Céline [30%] | 0.3h |  | 6.43 |  |  |
| 33 | 1.1.2.3.1.2.12 | Blocage d'utilisateur | 0.14d | 2017-11-27 09:50 | 2017-11-27 10:50 | 32 |  |  | 1.36d | 0d | Céline [30%] | 0.3h |  | 6.43 |  |  |
| 34 | 1.1.2.3.1.2.13 | Blocage de fonctionnalité | 0.14d | 2017-11-27 10:50 | 2017-11-27 11:50 | 33 |  |  | 1.36d |  | Céline [30%] | 0.3h |  | 6.43 |  |  |
| 35 | 1.1.2.3.1.2.14 | Analyse de consomation | 0.14d | 2017-11-27 10:50 | 2017-11-27 11:50 | 31 |  |  | 1.36d |  | Michel [30%] | 0.3h |  | 6.43 |  |  |

| ID | WBS | Task | Duration | Start | Finish | Predecessors | Total slack | Free slack | Resources | Work | Cost |
| --- | --- | --- | --- | --- | --- | --- | --- | --- | --- | --- | --- |
| 36 | 1.1.2.3.2 | **Réalisation des fonctions** | 47.57d | 2017-11-24 11:20 | 2018-01-30 17:20 |  | 51.9d | 0d |  | 168.9h | 3,619.29 |
| 37 | 1.1.2.3.2.1 | **Inscription de l'utilisateur** | 1.29d | 2017-11-24 11:20 | 2017-11-27 15:20 |  | 51.9d | 0d |  | 2.7h | 57.86 |
| 38 | 1.1.2.3.2.1.1 | Formulaire | 3h | 2017-11-24 11:20 | 2017-11-24 16:20 |  | 51.9d | 0d | Michel [30%] | 0.9h | 19.29 |
| 39 | 1.1.2.3.2.1.2 | API Google | 3h | 2017-11-24 16:20 | 2017-11-27 10:20 | 38 | 51.9d | 0d | Michel [30%] | 0.9h | 19.29 |
| 40 | 1.1.2.3.2.1.3 | API Facebook | 3h | 2017-11-27 10:20 | 2017-11-27 15:20 | 39 | 51.9d | 0d | Michel [30%] | 0.9h | 19.29 |
| 41 | 1.1.2.3.2.2 | Connexion de l'utilisateur | 3h | 2017-11-27 15:20 | 2017-11-28 09:20 | 40 | 97.76d |  | Michel [30%] | 0.9h | 19.29 |
| 42 | 1.1.2.3.2.3 | **Numériser un ticket de caisse** | 13.29d | 2017-11-27 15:20 | 2017-12-14 17:20 | 37 | 51.9d | 0d |  | 41.1h | 880.71 |
| 43 | 1.1.2.3.2.3.1 | Ajouter la librairie OpenCV | 4h | 2017-11-27 15:20 | 2017-11-28 10:20 |  | 51.9d | 0d | Céline [30%] | 1.2h | 25.71 |
| 44 | 1.1.2.3.2.3.2 | Prise en main de la librairie | 4d | 2017-11-28 10:20 | 2017-12-04 10:20 | 43 | 51.9d | 0d | Céline [30%] | 8.4h | 180 |
| 45 | 1.1.2.3.2.3.3 | Ajouter la gestion de l'appareil photo | 1d | 2017-12-04 10:20 | 2017-12-05 10:20 | 44 | 51.9d | 0d | Céline [30%] | 2.1h | 45 |
| 46 | 1.1.2.3.2.3.4 | Extraction des données | 7d | 2017-12-05 10:20 | 2017-12-14 10:20 | 45 | 51.9d | 0d | Céline [30%] | 14.7h | 315 |
| 47 | 1.1.2.3.2.3.5 | **Exploitation des données** | 2.71d | 2017-11-27 15:20 | 2017-11-30 11:20 |  | 61.62d | 9.86d |  | 11.4h | 244.29 |
| 48 | 1.1.2.3.2.3.5.1 | Regular expression pour la date | 3h | 2017-11-27 15:20 | 2017-11-28 09:20 |  | 61.62d | 0d | Céline [30%]; Michel [30%] | 1.8h | 38.57 |
| 49 | 1.1.2.3.2.3.5.2 | Régular expression pour l'adresse | 3h | 2017-11-28 09:20 | 2017-11-28 14:20 | 48 | 61.62d | 0d | Céline [30%]; Michel [30%] | 1.8h | 38.57 |
| 50 | 1.1.2.3.2.3.5.3 | Regular expression d'unité | 3h | 2017-11-28 14:20 | 2017-11-28 17:20 | 49 | 61.62d | 0d | Céline [30%]; Michel [30%] | 1.8h | 38.57 |
| 51 | 1.1.2.3.2.3.5.4 | Expression moyen de Paiement | 3h | 2017-11-28 17:20 | 2017-11-29 11:20 | 50 | 61.62d | 0d | Céline [30%]; Michel [30%] | 1.8h | 38.57 |
| 52 | 1.1.2.3.2.3.5.5 | Tests | 1d | 2017-11-29 11:20 | 2017-11-30 11:20 | 51 | 61.62d | 0d | Céline [30%]; Michel [30%] | 4.2h | 90 |
| 53 | 1.1.2.3.2.3.6 | Liaison avec la base de données | 1h | 2017-11-30 11:20 | 2017-11-30 14:20 | 52 | 61.62d | 9.71d | Céline [30%] | 0.3h | 6.43 |
| 54 | 1.1.2.3.2.3.7 | Tests | 5h | 2017-12-14 10:20 | 2017-12-14 17:20 | 43, 44, 45, 46, 47, 53 | 51.9d |  | Céline [30%]; Michel [30%] | 3h | 64.29 |
| 55 | 1.1.2.3.2.4 | **Recherche d'un lieu** | 1d | 2017-12-14 17:20 | 2017-12-15 17:20 | 42 | 51.9d | 0d |  | 3h | 64.29 |
| 56 | 1.1.2.3.2.4.1 | Par adresse | 1h | 2017-12-15 09:20 | 2017-12-15 10:20 | 57 | 51.9d | 0d | Céline [30%] | 0.3h | 6.43 |
| 57 | 1.1.2.3.2.4.2 | Par MAP | 1h | 2017-12-14 17:20 | 2017-12-15 09:20 |  | 51.9d | 0d | Michel [30%]; Céline [30%] | 0.6h | 12.86 |
| 58 | 1.1.2.3.2.4.3 | Par gamme de prix (qui est le moins cher) | 1h | 2017-12-15 10:20 | 2017-12-15 11:20 | 56 | 51.9d | 0d | Michel [30%] | 0.3h | 6.43 |
| 59 | 1.1.2.3.2.4.4 | Saisie d'un Avis | 1h | 2017-12-15 14:20 | 2017-12-15 15:20 | 60 | 51.9d | 0d | Michel [30%] | 0.3h | 6.43 |
| 60 | 1.1.2.3.2.4.5 | Fiche description | 1h | 2017-12-15 11:20 | 2017-12-15 14:20 | 58 | 51.9d | 0d | Céline [30%] | 0.3h | 6.43 |
| 61 | 1.1.2.3.2.4.6 | Tests | 2h | 2017-12-15 15:20 | 2017-12-15 17:20 | 56, 57, 58, 59, 60 | 51.9d |  | Michel [30%]; Céline [30%] | 1.2h | 25.71 |

| ID | WBS | Task | Duration | Start | Finish | Predecessors | Total slack | Free slack | Constraint | Resources | Work | Cost |
| --- | --- | --- | --- | --- | --- | --- | --- | --- | --- | --- | --- | --- |
| 62 | 1.1.2.3.2.5 | **Recherche de produit** | 1.71d | 2017-12-15 17:20 | 2017-12-19 15:20 | 55 | 51.9d | 0d |  |  | 4.2h | 90 |
| 63 | 1.1.2.3.2.5.1 | Par nom | 2h | 2017-12-18 10:20 | 2017-12-18 14:20 | 67 | 51.9d | 0d |  | Céline [30%] | 0.6h | 12.86 |
| 64 | 1.1.2.3.2.5.2 | Par marque | 0.29d | 2017-12-18 14:20 | 2017-12-18 16:20 | 63 | 51.9d | 0d |  | Céline [30%] | 0.6h | 12.86 |
| 65 | 1.1.2.3.2.5.3 | Par catégorie | 0.29d | 2017-12-18 16:20 | 2017-12-19 09:20 | 64 | 51.9d | 0d |  | Céline [30%] | 0.6h | 12.86 |
| 66 | 1.1.2.3.2.5.4 | Saisie d'un Avis | 0.29d | 2017-12-19 09:20 | 2017-12-19 11:20 | 65 | 51.9d | 0d |  | Michel [30%] | 0.6h | 12.86 |
| 67 | 1.1.2.3.2.5.5 | Fiche description | 0.29d | 2017-12-15 17:20 | 2017-12-18 10:20 |  | 51.9d | 0d |  | Céline [30%] | 0.6h | 12.86 |
| 68 | 1.1.2.3.2.5.6 | Tests | 2h | 2017-12-19 11:20 | 2017-12-19 15:20 | 66 | 51.9d |  |  | Céline [30%]; Michel [30%] | 1.2h | 25.71 |
| 69 | 1.1.2.3.2.6 | **Liste de course** | 10.43d | 2017-12-19 15:20 | 2018-01-03 09:20 | 62 | 51.9d | 0d |  |  | 27h | 578.57 |
| 70 | 1.1.2.3.2.6.1 | Choix du lieu | 2h | 2017-12-19 15:20 | 2017-12-19 17:20 |  | 51.9d | 0d |  | Michel [30%] | 0.6h | 12.86 |
| 71 | 1.1.2.3.2.6.2 | Proposition de lieu | 0.29d | 2017-12-19 15:20 | 2017-12-19 17:20 |  | 61.33d | 9.43d |  | Céline [30%] | 0.6h | 12.86 |
| 72 | 1.1.2.3.2.6.3 | **Ajout** | 8.57d | 2017-12-19 17:20 | 2018-01-01 14:20 | 70 | 51.9d | 0d |  |  | 18h | 385.71 |
| 73 | 1.1.2.3.2.6.3.1 | Proposer des promotions | 4d | 2017-12-19 17:20 | 2017-12-25 17:20 |  | 51.9d | 0d |  | Michel [30%] | 8.4h | 180 |
| 74 | 1.1.2.3.2.6.3.2 | Proposition des produits | 4d | 2017-12-25 17:20 | 2017-12-29 17:20 | 73 | 51.9d | 0d |  | Michel [30%] | 8.4h | 180 |
| 75 | 1.1.2.3.2.6.3.3 | Choix du produit | 2h | 2017-12-29 17:20 | 2018-01-01 10:20 | 74 | 51.9d | 0d |  | Céline [30%] | 0.6h | 12.86 |
| 76 | 1.1.2.3.2.6.3.4 | Lecture d'un avis | 2h | 2018-01-01 10:20 | 2018-01-01 14:20 | 75 | 51.9d | 0.86d |  | Céline [30%] | 0.6h | 12.86 |
| 77 | 1.1.2.3.2.6.4 | Supression | 2h | 2018-01-01 14:20 | 2018-01-01 16:20 | 72 | 52.48d | 0.57d |  | Céline [30%] | 0.6h | 12.86 |
| 78 | 1.1.2.3.2.6.5 | Quantité | 0.29d | 2018-01-01 14:20 | 2018-01-01 16:20 | 72 | 52.48d | 0.57d |  | Céline [30%] | 0.6h | 12.86 |
| 79 | 1.1.2.3.2.6.6 | Enregistrer sous | 0.29d | 2018-01-01 14:20 | 2018-01-01 16:20 | 72 | 51.9d | 0d | finish no earlier than 2017-10-24 18:00 | Céline [30%] | 0.6h | 12.86 |
| 80 | 1.1.2.3.2.6.7 | Envoyer par email | 4h | 2018-01-01 14:20 | 2018-01-02 09:20 | 72 | 52.19d | 0.29d |  | Michel [30%] | 1.2h | 25.71 |
| 81 | 1.1.2.3.2.6.8 | Définir une date | 0.29d | 2018-01-01 16:20 | 2018-01-02 09:20 | 79 | 51.9d | 0d |  | Céline [30%] | 0.6h | 12.86 |
| 82 | 1.1.2.3.2.6.9 | Programmer une alerte | 0.29d | 2018-01-02 09:20 | 2018-01-02 11:20 | 81 | 51.9d | 0d |  | Michel [30%] | 0.6h | 12.86 |
| 83 | 1.1.2.3.2.6.10 | Prix total | 0.29d | 2017-12-19 15:20 | 2017-12-19 17:20 |  | 61.33d | 9.43d |  | Céline [30%] | 0.6h | 12.86 |
| 84 | 1.1.2.3.2.6.11 | Tests | 5h | 2018-01-02 11:20 | 2018-01-03 09:20 | 70, 71, 72, 73, 74, 75, 76, 77, 78, 79, 80, 81, 82, 83 | 51.9d | 0d |  | Céline [30%]; Michel [30%] | 3h | 64.29 |
| 85 | 1.1.2.3.2.7 | Blocage d'un utilisateur | 3h | 2018-01-03 09:20 | 2018-01-03 14:20 | 69 | 51.9d | 0d |  | Céline [30%] | 0.9h | 19.29 |
| 86 | 1.1.2.3.2.8 | Blocage d'une fonctionnalité | 0.43d | 2018-01-03 14:20 | 2018-01-03 17:20 | 85 | 51.9d | 0d |  | Céline [30%] | 0.9h | 19.29 |
| 87 | 1.1.2.3.2.9 | Analyse de consomation | 7d | 2018-01-03 09:20 | 2018-01-12 09:20 | 84 | 62.76d | 10.86d |  | Michel [30%] | 14.7h | 315 |
| 88 | 1.1.2.3.2.10 | Dépense par mois/annuel Catégorie | 7d | 2018-01-03 17:20 | 2018-01-12 17:20 | 86 | 51.9d | 0d |  | Céline [30%]; Michel [30%] | 29.4h | 630 |
| 89 | 1.1.2.3.2.11 | Comparaison des promotions au mois | 7d | 2018-01-12 17:20 | 2018-01-23 17:20 | 88 | 51.9d | 0d |  | Céline [30%]; Michel [30%] | 29.4h | 630 |
| 90 | 1.1.2.3.2.12 | Alerte produit | 3d | 2018-01-23 17:20 | 2018-01-26 17:20 | 89 | 51.9d | 0d |  | Céline [30%] | 6.3h | 135 |
| 91 | 1.1.2.3.2.13 | Tests | 2d | 2018-01-26 17:20 | 2018-01-30 17:20 | 85, 86, 87, 88, 89, 90 | 51.9d |  |  | Céline [30%]; Michel [30%] | 8.4h | 180 |
| 92 | 1.1.2.3.3 | Tests d'intégration | 5d | 2018-01-30 17:20 | 2018-02-06 17:20 | 36 | 51.9d |  |  | Céline [30%]; Michel [30%] | 21h | 450 |
| 93 | 1.1.3 | Tests de validation | 5d | 2018-04-19 10:50 | 2018-04-26 10:50 | 4 | 0.55d | 0d |  | Céline [30%]; Michel [30%] | 21h | 450 |
| 94 | 1.1.4 | Déploiement sur le store | 1h | 2018-04-26 10:50 | 2018-04-26 11:50 | 93 | 0.55d |  |  | Céline [30%] | 0.3h | 6.43 |

| ID | WBS | Task | Duration | Start | Finish | Predecessors | Total slack | Free slack | Resources | Work | Cost |
| --- | --- | --- | --- | --- | --- | --- | --- | --- | --- | --- | --- |
| 95 | 1.2 | **Réalisation des cours** | 29.62d | 2018-04-26 11:50 | 2018-06-07 09:10 | 3, 2 | 0d |  |  | 149.1h | 3,195 |
| 96 | 1.2.1 | **Ecriture** | 17.02d | 2018-04-26 11:50 | 2018-05-21 12:00 |  | 0.55d | 0d |  | 77.7h | 1,665 |
| 97 | 1.2.1.1 | Java/Android | 9.24d | 2018-04-26 11:50 | 2018-05-09 17:40 |  | 8.02d |  | Céline [30%]; Michel [30%] | 29.4h | 630 |
| 98 | 1.2.1.2 | l'étude de cas | 13.62d | 2018-04-26 11:50 | 2018-05-18 17:50 |  | 1d |  | Céline [30%]; Michel [30%] | 33.6h | 720 |
| 99 | 1.2.1.3 | Librairie OpenCV | 3d | 2018-04-26 11:50 | 2018-05-21 12:00 |  | 0.55d |  | Céline [30%] | 6.3h | 135 |
| 100 | 1.2.1.4 | Les tests | 4d | 2018-04-26 16:20 | 2018-05-11 14:50 |  | 6.43d |  | Michel [30%] | 8.4h | 180 |
| 101 | 1.2.2 | **Relecture** | 1.9d | 2018-05-21 14:00 | 2018-05-23 11:20 | 96 | 0d |  |  | 12.6h | 270 |
| 102 | 1.2.2.1 | Java/Android | 1.29d | 2018-05-21 14:00 | 2018-05-22 16:00 |  | 0.62d |  | Céline [30%]; Michel [30%] | 4.2h | 90 |
| 103 | 1.2.2.2 | l'étude de cas | 1.29d | 2018-05-21 17:50 | 2018-05-23 10:50 |  | 0.07d |  | Céline [30%]; Michel [30%] | 4.2h | 90 |
| 104 | 1.2.2.3 | Librairie OpenCV | 1d | 2018-05-21 17:50 | 2018-05-23 11:20 |  | 0d |  | Michel [30%] | 2.1h | 45 |
| 105 | 1.2.2.4 | Les tests | 1d | 2018-05-22 09:00 | 2018-05-22 18:00 |  | 0.33d |  | Céline [30%] | 2.1h | 45 |
| 106 | 1.2.3 | **Mise en commun** | 2d | 2018-05-23 11:20 | 2018-05-25 11:20 | 101 | 0d |  |  | 16.8h | 360 |
| 107 | 1.2.3.1 | Java/Android | 1d | 2018-05-23 11:20 | 2018-05-24 11:20 |  | 1d |  | Céline [30%]; Michel [30%] | 4.2h | 90 |
| 108 | 1.2.3.2 | l'étude de cas | 1.98d | 2018-05-23 11:20 | 2018-05-25 11:10 |  | 0.02d |  | Céline [30%]; Michel [30%] | 4.2h | 90 |
| 109 | 1.2.3.3 | Librairie OpenCV | 1.02d | 2018-05-23 11:20 | 2018-05-25 11:20 |  | 0d |  | Céline [30%]; Michel [30%] | 4.2h | 90 |
| 110 | 1.2.3.4 | Les tests | 1.02d | 2018-05-23 11:20 | 2018-05-25 11:20 |  | 0d |  | Céline [30%]; Michel [30%] | 4.2h | 90 |
| 111 | 1.2.4 | **Ajustement** | 6.69d | 2018-05-25 11:20 | 2018-06-05 09:10 | 106 | 0d |  |  | 33.6h | 720 |
| 112 | 1.2.4.1 | Java/Android | 2d | 2018-05-25 11:20 | 2018-05-29 11:20 |  | 4.69d |  | Céline [30%]; Michel [30%] | 8.4h | 180 |
| 113 | 1.2.4.2 | l'étude de cas | 3.9d | 2018-05-25 11:20 | 2018-05-31 10:40 |  | 2.79d |  | Céline [30%]; Michel [30%] | 8.4h | 180 |
| 114 | 1.2.4.3 | Librairie OpenCV | 3.9d | 2018-05-25 11:20 | 2018-06-04 09:50 |  | 0.9d |  | Céline [30%]; Michel [30%] | 8.4h | 180 |
| 115 | 1.2.4.4 | Les tests | 3.9d | 2018-05-25 11:20 | 2018-06-05 09:10 |  | 0d |  | Céline [30%]; Michel [30%] | 8.4h | 180 |
| 116 | 1.2.5 | Essai de présentation | 1d | 2018-06-05 09:10 | 2018-06-06 09:10 | 111 | 0d |  | Céline [30%]; Michel [30%] | 4.2h | 90 |
| 117 | 1.2.6 | Formation des clients finaux | 1d | 2018-06-06 09:10 | 2018-06-07 09:10 | 116 | 0d |  | Céline [30%]; Michel [30%] | 4.2h | 90 |
